# caNanoLab 1.5.2 Plan

Schedule from MS Project, 2010-06-01 to 2010-09-24, A marks actual dates.
NCI

## Calendars

- Standard: Mon-Fri 08:00-12:00, 13:00-17:00; Sat-Sun off.

## Resources

| Resource |
| --- |
| Thai |
| Sharon |
| Juli |
| Sue |
| QA |
| NCI |
| Team |
| Tai |
| SIE |
| Systems |

## Schedule

| ID | WBS | Task | Type | Duration | Start | Finish | Predecessors | Complete | Remaining | Baseline start | Baseline finish | Baseline duration | Total slack | Free slack | Constraint | Resources | Work | Actual work |
| --- | --- | --- | --- | --- | --- | --- | --- | --- | --- | --- | --- | --- | --- | --- | --- | --- | --- | --- |
| 1 | 1 | **caNanoLab 1.5.2** |  | 83.12d | 2010-06-01 A | 2010-09-24 |  | 14% | 71.36d | 2010-06-01 | 2010-09-24 | 83.12d | 3d |  |  |  | 1850h | 289.4h |
| 2 | 1.1 | **Inception** |  | 19d | 2010-06-01 A | 2010-06-25 |  | 65% | 6.63d | 2010-06-01 | 2010-06-25 | 19d | 67.12d |  |  |  | 339h | 201.4h |
| 3 | 1.1.1 | **Project Mangement** |  | 8d | 2010-06-01 A | 2010-06-10 |  | 67% | 2.63d | 2010-06-01 | 2010-06-10 | 8d | 78.12d |  |  |  | 64h | 44.8h |
| 4 | 1.1.1.1 | Determine Initial Scope |  | 1d | 2010-06-01 A | 2010-06-01 |  | 90% | 0.1d | 2010-06-01 | 2010-06-01 | 1d | 6.4d | 0d |  | Sharon; Juli | 16h | 14.4h |
| 5 | 1.1.1.2 | Draft Initial Project Plan |  | 2d | 2010-06-02 A | 2010-06-03 | 4 | 90% | 0.2d | 2010-06-02 | 2010-06-03 | 2d | 4.6d | 0d |  | Sharon | 16h | 14.4h |
| 6 | 1.1.1.3 | Review/Update Project Plan |  | 2d | 2010-06-04 A | 2010-06-07 | 5 | 50% | 1d | 2010-06-04 | 2010-06-07 | 2d | 78.12d | 0d |  | Team | 16h | 8h |
| 7 | 1.1.1.4 | Deliverable: Baselined Project Plan | milestone | 1d | 2010-06-08 | 2010-06-08 | 6 |  |  | 2010-06-08 | 2010-06-08 | 1d | 80.12d |  |  | Sharon | 8h |  |
| 8 | 1.1.1.5 | **Report Project Status** |  | 1d | 2010-06-10 A | 2010-06-10 A |  | 100% |  | 2010-06-10 | 2010-06-10 | 1d |  |  |  |  | 8h | 8h |
| 9 | 1.1.1.5.1 | Draft Monthly Status Report | milestone | 1d | 2010-06-10 A | 2010-06-10 A |  | 100% |  | 2010-06-10 | 2010-06-10 | 1d |  |  | start no earlier than 2010-06-10 | Sharon | 8h | 8h |
| 10 | 1.1.2 | **Requirements** |  | 8d | 2010-06-04 A | 2010-06-15 |  | 65% | 2.8d | 2010-06-04 | 2010-06-15 | 8d | 72.12d |  |  |  | 100h | 65.6h |
| 11 | 1.1.2.1 | Research Group Accounts on CBIIT Projects |  | 2d | 2010-06-04 A | 2010-06-07 | 5 | 80% | 0.4d | 2010-06-04 | 2010-06-07 | 2d | 3d | 0d |  | Sharon | 16h | 12.8h |
| 12 | 1.1.2.2 | Draft Curation Account Matrix Requirements/Use Cases |  | 1w | 2010-06-08 A | 2010-06-14 | 11, 5 | 50% | 0.5w | 2010-06-08 | 2010-06-14 | 1w | 0.5d | 0d |  | Sue [50%] | 20h | 10h |
| 13 | 1.1.2.3 | Draft Data Availability Matrix Requirements/Use Cases |  | 3d | 2010-06-04 A | 2010-06-08 | 5 | 95% | 0.15d | 2010-06-04 | 2010-06-08 | 3d | 76.12d | 0d |  | Thai | 24h | 22.8h |
| 14 | 1.1.2.4 | Determine ISO/MinChar Standards |  | 2d | 2010-06-09 A | 2010-06-10 | 13 | 50% | 1d | 2010-06-09 | 2010-06-10 | 2d | 75.12d |  |  | Sharon; Thai | 32h | 16h |
| 15 | 1.1.2.5 | Milestone: Review Requirements |  | 1d | 2010-06-15 A | 2010-06-15 | 12 | 50% | 0.5d | 2010-06-15 | 2010-06-15 | 1d | 0d |  |  | Team | 8h | 4h |
| 16 | 1.1.3 | **Analysis and Design** |  | 3d | 2010-06-16 | 2010-06-18 |  |  |  | 2010-06-16 | 2010-06-18 | 3d | 0d |  |  |  | 48h |  |
| 17 | 1.1.3.1 | Design Data Availability Matrix |  | 3d | 2010-06-16 | 2010-06-18 | 15 |  |  | 2010-06-16 | 2010-06-18 | 3d | 0d |  |  | Thai; Sue | 48h |  |
| 18 | 1.1.4 | **Implementation** |  | 4d | 2010-06-21 A | 2010-06-24 | 16 | 38% | 2.5d | 2010-06-21 | 2010-06-24 | 4d | 0d |  |  |  | 32h | 12h |
| 19 | 1.1.4.1 | Implement Data Availabilty Matrix Wireframes |  | 3d | 2010-06-21 A | 2010-06-23 |  | 50% | 1.5d | 2010-06-21 | 2010-06-23 | 3d | 0d |  |  | Thai | 24h | 12h |
| 20 | 1.1.4.2 | Milestone: Review Wireframes |  | 1d | 2010-06-24 | 2010-06-24 | 19 |  |  | 2010-06-24 | 2010-06-24 | 1d | 0d |  |  | Team | 8h |  |
| 21 | 1.1.5 | **Testing** |  | 1d | 2010-06-25 | 2010-06-25 | 18 |  |  | 2010-06-25 | 2010-06-25 | 1d | 64.62d |  |  |  | 16h |  |
| 22 | 1.1.5.1 | Discuss Test Approach |  | 1d | 2010-06-25 | 2010-06-25 |  |  |  | 2010-06-25 | 2010-06-25 | 1d | 67.12d |  |  | Sharon; QA | 16h |  |
| 23 | 1.1.6 | **Environment** |  | 7.12d | 2010-06-04 A | 2010-06-15 A |  | 100% |  | 2010-06-04 | 2010-06-15 | 7.12d |  |  |  |  | 79h | 79h |
| 24 | 1.1.6.1 | Setup the Development Environment |  | 2d | 2010-06-04 A | 2010-06-07 A | 5 | 100% |  | 2010-06-04 | 2010-06-07 | 2d |  |  |  | Sue; Thai | 32h | 32h |
| 25 | 1.1.6.2 | Submit BDA Project Setup Request |  | 3d | 2010-06-04 A | 2010-06-08 A | 5 | 100% |  | 2010-06-04 | 2010-06-08 | 3d |  |  |  | Sue | 24h | 24h |
| 26 | 1.1.6.3 | Review new BDA Utilities |  | 4d | 2010-06-09 A | 2010-06-14 A | 25 | 100% |  | 2010-06-09 | 2010-06-14 | 4d |  |  |  | Sue [50%] | 16h | 16h |
| 27 | 1.1.6.4 | Draft/Submit BDA Development Checklist |  | 1h | 2010-06-09 A | 2010-06-09 A | 25 | 100% |  | 2010-06-09 | 2010-06-09 | 1h |  |  |  | Sue | 1h | 1h |
| 28 | 1.1.6.5 | Draft/Submit Gap Analysis |  | 8h | 2010-06-09 A | 2010-06-10 A | 27 | 100% |  | 2010-06-09 | 2010-06-10 | 8h |  |  |  | Sue [50%] | 4h | 4h |
| 29 | 1.1.6.6 | Draft/Submit Initial BDA Project Plan | milestone | 1h | 2010-06-15 A | 2010-06-15 A | 28, 26 | 100% |  | 2010-06-15 | 2010-06-15 | 1h |  |  |  | Sue; Sharon | 2h | 2h |
| 30 | 1.1.6.7 | Deliverable: BDA Project Plan | milestone | 0d | 2010-06-15 A | 2010-06-15 A | 29 | 100% |  | 2010-06-15 | 2010-06-15 | 0d |  |  |  | Sue; Sharon |  |  |

Notes:
- 29: https://wiki.nci.nih.gov/display/BuildandDeploymentAutomation/BDA+Project+Plan+Template

| ID | WBS | Task | Type | Duration | Start | Finish | Predecessors | Complete | Remaining | Baseline start | Baseline finish | Baseline duration | Total slack | Free slack | Constraint | Resources | Work | Actual work |
| --- | --- | --- | --- | --- | --- | --- | --- | --- | --- | --- | --- | --- | --- | --- | --- | --- | --- | --- |
| 31 | 1.2 | **Elaboration** |  | 26.5d | 2010-06-25 A | 2010-08-02 | 18 | 6% | 24.86d | 2010-06-25 | 2010-08-02 | 26.5d | 39.12d |  |  |  | 797h | 88h |
| 32 | 1.2.1 | **Project Management** |  | 1d | 2010-07-09 | 2010-07-09 |  |  |  | 2010-07-09 | 2010-07-09 | 1d | 54.62d |  |  |  | 8h |  |
| 33 | 1.2.1.1 | **Report Project Status** |  | 1d | 2010-07-09 | 2010-07-09 |  |  |  | 2010-07-09 | 2010-07-09 | 1d | 54.62d |  |  |  | 8h |  |
| 34 | 1.2.1.1.1 | Draft Monthly Status Report | milestone | 1d | 2010-07-09 | 2010-07-09 |  |  |  | 2010-07-09 | 2010-07-09 | 1d | 57.12d | 0d | start no earlier than 2010-07-09 | Sharon | 8h |  |
| 35 | 1.2.1.1.2 | Deliverable: Monthly Status Report | milestone | 0d | 2010-07-09 | 2010-07-09 | 34 |  |  | 2010-07-09 | 2010-07-09 | 0d | 57.12d |  |  | Sharon |  |  |
| 36 | 1.2.2 | **Iteration 1: Curation Account Mgmt** |  | 24d | 2010-06-25 | 2010-07-28 |  |  |  | 2010-06-25 | 2010-07-28 | 24d | 26.62d |  |  |  | 296h |  |
| 37 | 1.2.2.1 | **Requirements** |  | 3d | 2010-06-25 | 2010-06-29 |  |  |  | 2010-06-25 | 2010-06-29 | 3d | 59.62d | 0d |  |  | 48h |  |
| 38 | 1.2.2.1.1 | Update Requirements/Use Cases |  | 3d | 2010-06-25 | 2010-06-29 |  |  |  | 2010-06-25 | 2010-06-29 | 3d | 62.12d |  |  | Sue; Sharon | 48h |  |
| 39 | 1.2.2.2 | **Analysis and Design** |  | 3d | 2010-06-25 | 2010-06-29 |  |  |  | 2010-06-25 | 2010-06-29 | 3d | 26.62d | 0d |  |  | 24h |  |
| 40 | 1.2.2.2.1 | Update Design Specification |  | 3d | 2010-06-25 | 2010-06-29 |  |  |  | 2010-06-25 | 2010-06-29 | 3d | 29.12d |  |  | Sue | 24h |  |
| 41 | 1.2.2.3 | **Implementation** |  | 11d | 2010-06-30 | 2010-07-14 | 39 |  |  | 2010-06-30 | 2010-07-14 | 11d | 26.62d | 0d |  |  | 80h |  |
| 42 | 1.2.2.3.1 | Implement Wireframes |  | 3d | 2010-06-30 | 2010-07-02 |  |  |  | 2010-06-30 | 2010-07-02 | 3d | 51.12d | 0d |  | Sue | 24h |  |
| 43 | 1.2.2.3.2 | Milestone: Review Wireframes |  | 1d | 2010-07-05 | 2010-07-05 | 42 |  |  | 2010-07-05 | 2010-07-05 | 1d | 51.12d |  |  | Team | 8h |  |
| 44 | 1.2.2.3.3 | Implement Curation Account Mgmt |  | 2w | 2010-06-30 | 2010-07-13 |  |  |  | 2010-06-30 | 2010-07-13 | 2w | 44.12d | 0d |  | Sue [50%] | 40h |  |
| 45 | 1.2.2.3.4 | Milestone: Demonstrate Data Availability Matrix | milestone | 1d | 2010-07-14 | 2010-07-14 | 44 |  |  | 2010-07-14 | 2010-07-14 | 1d | 44.12d |  |  | Sue | 8h |  |
| 46 | 1.2.2.4 | **Testing** |  | 21d | 2010-06-30 | 2010-07-28 |  |  |  | 2010-06-30 | 2010-07-28 | 21d | 41.62d |  |  |  | 144h |  |
| 47 | 1.2.2.4.1 | Draft Test Plan/Cases |  | 3d | 2010-06-30 | 2010-07-02 | 37 |  |  | 2010-06-30 | 2010-07-02 | 3d | 62.12d |  |  | QA | 24h |  |
| 48 | 1.2.2.4.2 | Milestone: Deploy to QA |  | 2d | 2010-07-15 | 2010-07-16 | 41 |  |  | 2010-07-15 | 2010-07-16 | 2d | 44.12d | 0d |  | QA | 16h |  |
| 49 | 1.2.2.4.3 | Test on QA |  | 1w | 2010-07-19 | 2010-07-23 | 48 |  |  | 2010-07-19 | 2010-07-23 | 1w | 44.12d | 0d |  | QA | 40h |  |
| 50 | 1.2.2.4.4 | Resolve Defects |  | 1w | 2010-07-19 | 2010-07-23 | 48 |  |  | 2010-07-19 | 2010-07-23 | 1w | 47.12d |  |  | Thai | 40h |  |
| 51 | 1.2.2.4.5 | Re-Deploy/Test |  | 3d | 2010-07-26 | 2010-07-28 | 49 |  |  | 2010-07-26 | 2010-07-28 | 3d | 44.12d |  |  | QA | 24h |  |
| 52 | 1.2.3 | **Iteration 2: Data Availability Matrix** |  | 20.5d | 2010-07-05 | 2010-08-02 | 18 |  |  | 2010-07-05 | 2010-08-02 | 20.5d | 0.5d | 0d |  |  | 244h |  |
| 53 | 1.2.3.1 | **Requirements** |  | 2d | 2010-07-05 | 2010-07-06 |  |  |  | 2010-07-05 | 2010-07-06 | 2d | 16d | 0d |  |  | 16h |  |
| 54 | 1.2.3.1.1 | Update Requirements/Use Cases |  | 2d | 2010-07-05 | 2010-07-06 |  |  |  | 2010-07-05 | 2010-07-06 | 2d | 16d |  |  | Thai | 16h |  |

| ID | WBS | Task | Type | Duration | Start | Finish | Predecessors | Complete | Remaining | Baseline start | Baseline finish | Baseline duration | Total slack | Free slack | Resources | Work | Actual work |
| --- | --- | --- | --- | --- | --- | --- | --- | --- | --- | --- | --- | --- | --- | --- | --- | --- | --- |
| 55 | 1.2.3.2 | **Analysis and Design** |  | 2d | 2010-07-05 | 2010-07-06 |  |  |  | 2010-07-05 | 2010-07-06 | 2d | 0.5d | 0d |  | 16h |  |
| 56 | 1.2.3.2.1 | Update Design Specification |  | 2d | 2010-07-05 | 2010-07-06 |  |  |  | 2010-07-05 | 2010-07-06 | 2d | 0.5d |  | Thai | 16h |  |
| 57 | 1.2.3.3 | **Implementation** |  | 8.5d | 2010-07-07 | 2010-07-19 | 55 |  |  | 2010-07-07 | 2010-07-19 | 8.5d | 0.5d | 0d |  | 68h |  |
| 58 | 1.2.3.3.1 | Implement Data Availability Matrix |  | 1.5w | 2010-07-07 | 2010-07-16 |  |  |  | 2010-07-07 | 2010-07-16 | 1.5w | 0.5d | 0d | Thai | 60h |  |
| 59 | 1.2.3.3.2 | Milestone: Demonstrate Data Availability Matrix | milestone | 1d | 2010-07-16 | 2010-07-19 | 58 |  |  | 2010-07-16 | 2010-07-19 | 1d | 0.5d |  | Thai | 8h |  |
| 60 | 1.2.3.4 | **Testing** |  | 18.5d | 2010-07-07 | 2010-08-02 |  |  |  | 2010-07-07 | 2010-08-02 | 18.5d | 0.5d |  |  | 144h |  |
| 61 | 1.2.3.4.1 | Draft Test Plan/Cases |  | 3d | 2010-07-07 | 2010-07-09 | 53 |  |  | 2010-07-07 | 2010-07-09 | 3d | 16d |  | QA | 24h |  |
| 62 | 1.2.3.4.2 | Milestone: Deploy to QA |  | 2d | 2010-07-19 | 2010-07-21 | 57 |  |  | 2010-07-19 | 2010-07-21 | 2d | 0.5d | 0d | QA | 16h |  |
| 63 | 1.2.3.4.3 | Test on QA |  | 1w | 2010-07-21 | 2010-07-28 | 62 |  |  | 2010-07-21 | 2010-07-28 | 1w | 0.5d | 0d | QA | 40h |  |
| 64 | 1.2.3.4.4 | Resolve Defects |  | 1w | 2010-07-21 | 2010-07-28 | 62 |  |  | 2010-07-21 | 2010-07-28 | 1w | 3.5d |  | Thai | 40h |  |
| 65 | 1.2.3.4.5 | Re-Deploy/Test |  | 3d | 2010-07-28 | 2010-08-02 | 63 |  |  | 2010-07-28 | 2010-08-02 | 3d | 0.5d |  | QA | 24h |  |
| 66 | 1.2.4 | **Environment** |  | 26.38d | 2010-06-25 A | 2010-08-02 |  | 23% | 20.38d | 2010-06-25 | 2010-08-02 | 26.38d | 2.5d | 0.12d |  | 249h | 88h |
| 67 | 1.2.4.1 | Draft ARC |  | 8h | 2010-06-25 A | 2010-06-25 A |  | 100% |  | 2010-06-25 | 2010-06-25 | 8h |  |  | Sue | 8h | 8h |
| 68 | 1.2.4.2 | Update/Submit Final Wiki Project Plan |  | 1w | 2010-06-28 A | 2010-07-02 A | 67 | 100% |  | 2010-06-28 | 2010-07-02 | 1w |  |  | Sue; Sharon | 80h | 80h |
| 69 | 1.2.4.3 | Create Systems Request for BDA Setup |  | 1w | 2010-07-05 | 2010-07-09 | 68 |  |  | 2010-07-05 | 2010-07-09 | 1w | 2.5d | 0d | Sue | 40h |  |
| 70 | 1.2.4.4 | Attend Project Plan Review |  | 1w | 2010-07-12 | 2010-07-16 | 69 |  |  | 2010-07-12 | 2010-07-16 | 1w | 2.5d | 0d | Sue | 40h |  |
| 71 | 1.2.4.5 | Submit ARC to Systems |  | 1w | 2010-07-19 | 2010-07-23 | 70 |  |  | 2010-07-19 | 2010-07-23 | 1w | 2.5d | 0d | Sue | 40h |  |
| 72 | 1.2.4.6 | Meet with BDA to Review Installation |  | 1d | 2010-07-26 | 2010-07-26 | 71 |  |  | 2010-07-26 | 2010-07-26 | 1d | 2.5d | 0d | Sue | 8h |  |
| 73 | 1.2.4.7 | Identify/Externalize Properities |  | 1d | 2010-07-27 | 2010-07-27 | 72 |  |  | 2010-07-27 | 2010-07-27 | 1d | 2.5d | 0d | Sue | 8h |  |
| 74 | 1.2.4.8 | Implement BDA Templates |  | 1d | 2010-07-28 | 2010-07-28 | 73 |  |  | 2010-07-28 | 2010-07-28 | 1d | 2.5d | 0d | Sue | 8h |  |
| 75 | 1.2.4.9 | Eliminate Build Script Duality |  | 3h | 2010-07-29 | 2010-07-29 | 74 |  |  | 2010-07-29 | 2010-07-29 | 3h | 2.5d | 0d | Sue | 3h |  |
| 76 | 1.2.4.10 | Verify JADS Compatible |  | 4h | 2010-07-29 | 2010-07-29 | 75 |  |  | 2010-07-29 | 2010-07-29 | 4h | 2.5d | 0d | Sue | 4h |  |
| 77 | 1.2.4.11 | Setup CI Server |  | 2h | 2010-07-29 | 2010-07-30 | 76 |  |  | 2010-07-29 | 2010-07-30 | 2h | 2.5d | 0d | Sue | 2h |  |
| 78 | 1.2.4.12 | Milestone: First Build to DEV (Command Line Deployment) |  | 1d | 2010-07-30 | 2010-08-02 | 77 |  |  | 2010-07-30 | 2010-08-02 | 1d | 2.5d | 0d | Sue | 8h |  |
| 79 | 1.2.4.13 | Setup Anthill Pro (DEV Target) |  | 2h | 2010-08-02 | 2010-08-02 | 78 |  |  | 2010-08-02 | 2010-08-02 | 2h | 2.5d |  |  |  |  |

| ID | WBS | Task | Type | Duration | Start | Finish | Predecessors | Baseline start | Baseline finish | Baseline duration | Total slack | Free slack | Constraint | Resources | Work |
| --- | --- | --- | --- | --- | --- | --- | --- | --- | --- | --- | --- | --- | --- | --- | --- |
| 80 | 1.3 | **Construction** |  | 20.5d | 2010-08-02 | 2010-08-30 | 52 | 2010-08-02 | 2010-08-30 | 20.5d | 0d |  |  |  | 321h |
| 81 | 1.3.1 | **Project Management** |  | 1d | 2010-08-10 | 2010-08-10 |  | 2010-08-10 | 2010-08-10 | 1d | 14d |  |  |  | 8h |
| 82 | 1.3.1.1 | **Report Project Status** |  | 1d | 2010-08-10 | 2010-08-10 |  | 2010-08-10 | 2010-08-10 | 1d | 14d |  |  |  | 8h |
| 83 | 1.3.1.1.1 | Draft Monthly Status Report |  | 1d | 2010-08-10 | 2010-08-10 |  | 2010-08-10 | 2010-08-10 | 1d | 14d | 0d | start no earlier than 2010-08-10 | Sharon | 8h |
| 84 | 1.3.1.1.2 | Deliverable: Monthly Status Report | milestone | 0d | 2010-08-10 | 2010-08-10 | 83 | 2010-08-10 | 2010-08-10 | 0d | 14d |  |  | Sharon |  |
| 85 | 1.3.2 | **Iteration 1: Defect Fixes/Enhancements** |  | 10d | 2010-08-02 | 2010-08-16 |  | 2010-08-02 | 2010-08-16 | 10d | 0.5d | 0d |  |  | 160h |
| 86 | 1.3.2.1 | Requirements |  | 1w | 2010-08-02 | 2010-08-09 |  | 2010-08-02 | 2010-08-09 | 1w | 5.5d |  |  | Thai | 40h |
| 87 | 1.3.2.2 | Analysis and Design |  | 1w | 2010-08-02 | 2010-08-09 |  | 2010-08-02 | 2010-08-09 | 1w | 5.5d |  |  | Thai | 40h |
| 88 | 1.3.2.3 | Implementation |  | 2w | 2010-08-02 | 2010-08-16 |  | 2010-08-02 | 2010-08-16 | 2w | 0.5d |  |  | Thai | 80h |
| 89 | 1.3.3 | **Environment** |  | 3.12d | 2010-08-02 | 2010-08-05 | 66 | 2010-08-02 | 2010-08-05 | 3.12d | 2.38d |  |  |  | 25h |
| 90 | 1.3.3.1 | Implement GUI Installers |  | 2d | 2010-08-02 | 2010-08-04 |  | 2010-08-02 | 2010-08-04 | 2d | 2.38d | 0d |  | Sue | 16h |
| 91 | 1.3.3.2 | Create Wiki-based Deployment Insructions |  | 4h | 2010-08-04 | 2010-08-04 | 90 | 2010-08-04 | 2010-08-04 | 4h | 2.38d | 0d |  | Sue | 4h |
| 92 | 1.3.3.3 | Milestone: First Build to QA (Command Line Deployment) |  | 2h | 2010-08-05 | 2010-08-05 | 91 | 2010-08-05 | 2010-08-05 | 2h | 17.38d | 0d |  | Sue | 2h |
| 93 | 1.3.3.4 | Setup Anthill Pro (QA Target) |  | 1h | 2010-08-05 | 2010-08-05 | 92 | 2010-08-05 | 2010-08-05 | 1h | 17.38d | 0d |  | Sue | 1h |
| 94 | 1.3.3.5 | Configure Nightly AntHill Pro Track (DEV) |  | 1h | 2010-08-05 | 2010-08-05 | 93 | 2010-08-05 | 2010-08-05 | 1h | 17.38d | 0d |  | Sue | 1h |
| 95 | 1.3.3.6 | Ask BDA Team to Add Project to Certification Dashboard |  | 1h | 2010-08-05 | 2010-08-05 | 94 | 2010-08-05 | 2010-08-05 | 1h | 17.38d |  |  | Sue | 1h |
| 96 | 1.3.4 | Milestone: Deploy to QA | milestone | 0d | 2010-08-16 | 2010-08-16 | 85 | 2010-08-16 | 2010-08-16 | 0d | 0.5d | 0d |  | Systems |  |
| 97 | 1.3.5 | Test on QA |  | 1w | 2010-08-16 | 2010-08-23 | 96 | 2010-08-16 | 2010-08-23 | 1w | 0.5d | 0d |  | QA | 40h |
| 98 | 1.3.6 | Sent Request for AppScan on QA |  | 1d | 2010-08-30 | 2010-08-30 | 97 | 2010-08-30 | 2010-08-30 | 1d | 0d |  |  | Sue | 8h |
| 99 | 1.3.7 | Re-Deploy/Resolve Defects |  | 1w | 2010-08-23 | 2010-08-30 | 96, 97 | 2010-08-23 | 2010-08-30 | 1w | 0.5d |  |  | QA; Team | 80h |
| 100 | 1.4 | **Transition** |  | 18.12d | 2010-08-31 | 2010-09-24 | 80 | 2010-08-31 | 2010-09-24 | 18.12d | 0d |  |  |  | 393h |
| 101 | 1.4.1 | **Project Management** |  | 1d | 2010-09-10 | 2010-09-10 |  | 2010-09-10 | 2010-09-10 | 1d | 9.12d |  |  |  | 8h |
| 102 | 1.4.1.1 | **Report Project Status** |  | 1d | 2010-09-10 | 2010-09-10 |  | 2010-09-10 | 2010-09-10 | 1d | 9.12d |  |  |  | 8h |
| 103 | 1.4.1.1.1 | Draft Monthly Status Report |  | 1d | 2010-09-10 | 2010-09-10 |  | 2010-09-10 | 2010-09-10 | 1d | 9.12d | 0d | start no earlier than 2010-09-10 | Sharon | 8h |
| 104 | 1.4.1.1.2 | Deliverable: Monthly Status Report | milestone | 0d | 2010-09-10 | 2010-09-10 | 103 | 2010-09-10 | 2010-09-10 | 0d | 9.12d |  |  | Sharon |  |

| ID | WBS | Task | Type | Duration | Start | Finish | Predecessors | Baseline start | Baseline finish | Baseline duration | Total slack | Free slack | Constraint | Resources | Work |
| --- | --- | --- | --- | --- | --- | --- | --- | --- | --- | --- | --- | --- | --- | --- | --- |
| 105 | 1.4.2 | **Requirements** |  | 5d | 2010-08-31 | 2010-09-06 |  | 2010-08-31 | 2010-09-06 | 5d | 13.12d |  |  |  | 80h |
| 106 | 1.4.2.1 | Finalize Use Case Specification |  | 1w | 2010-08-31 | 2010-09-06 |  | 2010-08-31 | 2010-09-06 | 1w | 13.12d | 0d |  | Thai; Sharon | 80h |
| 107 | 1.4.2.2 | Deliverable: Use Case Specification | milestone | 0d | 2010-09-06 | 2010-09-06 | 106 | 2010-09-06 | 2010-09-06 | 0d | 13.12d |  |  | Thai; Sharon |  |
| 108 | 1.4.3 | **Analysis and Design** |  | 10d | 2010-08-31 | 2010-09-13 |  | 2010-08-31 | 2010-09-13 | 10d | 3.12d | 0d |  |  | 80h |
| 109 | 1.4.3.1 | Finalize Design Specification |  | 2w | 2010-08-31 | 2010-09-13 |  | 2010-08-31 | 2010-09-13 | 2w | 3.12d | 0d |  | Sue | 80h |
| 110 | 1.4.3.2 | Deliverable: Design Specification | milestone | 0d | 2010-09-13 | 2010-09-13 | 109 | 2010-09-13 | 2010-09-13 | 0d | 3.12d |  |  | Sue |  |
| 111 | 1.4.4 | **Implementation** |  | 5d | 2010-09-14 | 2010-09-20 | 108 | 2010-09-14 | 2010-09-20 | 5d | 3.12d |  |  |  | 64h |
| 112 | 1.4.4.1 | Finalize Installation Guide |  | 1w | 2010-09-14 | 2010-09-20 |  | 2010-09-14 | 2010-09-20 | 1w | 3.12d | 0d |  | Sue | 40h |
| 113 | 1.4.4.2 | Deliverable: Installation Guide | milestone | 0d | 2010-09-20 | 2010-09-20 | 112 | 2010-09-20 | 2010-09-20 | 0d | 3.12d |  |  | Sue |  |
| 114 | 1.4.4.3 | Package Software |  | 1w | 2010-09-14 | 2010-09-20 |  | 2010-09-14 | 2010-09-20 | 1w | 3.12d | 0d |  |  |  |
| 115 | 1.4.4.4 | Deliverable: Packaged Software | milestone | 0d | 2010-09-20 | 2010-09-20 | 114 | 2010-09-20 | 2010-09-20 | 0d | 3.12d |  |  | Sue |  |
| 116 | 1.4.4.5 | Update Wiki Content |  | 3d | 2010-09-14 | 2010-09-16 |  | 2010-09-14 | 2010-09-16 | 3d | 5.12d |  |  | Sharon | 24h |
| 117 | 1.4.5 | **Testing** |  | 18.12d | 2010-08-31 | 2010-09-24 |  | 2010-08-31 | 2010-09-24 | 18.12d | 0d |  |  |  | 161h |
| 118 | 1.4.5.1 | Request STAGE Dry Run Test |  | 4h | 2010-08-31 | 2010-08-31 |  | 2010-08-31 | 2010-08-31 | 4h | 0d |  |  | Sue | 4h |
| 119 | 1.4.5.2 | Request App Scan on STAGE |  | 4h | 2010-08-31 | 2010-08-31 | 118 | 2010-08-31 | 2010-08-31 | 4h | 0d |  |  | Sue | 4h |
| 120 | 1.4.5.3 | Milestone: Deploy to STAGE |  | 2d | 2010-09-01 | 2010-09-02 | 119 | 2010-09-01 | 2010-09-02 | 2d | 0d |  |  | Systems | 16h |
| 121 | 1.4.5.4 | Test on STAGE |  | 1w | 2010-09-03 | 2010-09-09 | 120 | 2010-09-03 | 2010-09-09 | 1w | 0d |  |  | QA | 40h |
| 122 | 1.4.5.5 | Send Request for AppScan |  | 1d | 2010-09-10 | 2010-09-10 | 121 | 2010-09-10 | 2010-09-10 | 1d | 9.12d |  |  | Sue | 8h |
| 123 | 1.4.5.6 | Re-Deploy/Resolve Defects |  | 1w | 2010-09-10 | 2010-09-16 | 121 | 2010-09-10 | 2010-09-16 | 1w | 0d |  |  | Team | 40h |
| 124 | 1.4.5.7 | Request Systems Team PROD Deployment Setup |  | 1h | 2010-09-17 | 2010-09-17 | 123 | 2010-09-17 | 2010-09-17 | 1h | 0d |  |  | Sue | 1h |
| 125 | 1.4.5.8 | Milestone: Deploy to PROD |  | 2d | 2010-09-17 | 2010-09-21 | 124 | 2010-09-17 | 2010-09-21 | 2d | 0d |  |  | Systems | 16h |
| 126 | 1.4.5.9 | Test on PROD |  | 2d | 2010-09-21 | 2010-09-23 | 125 | 2010-09-21 | 2010-09-23 | 2d | 0d |  |  | QA | 16h |
| 127 | 1.4.5.10 | Milestone: Announce Availability to the Community | milestone | 1d | 2010-09-23 | 2010-09-24 | 126 | 2010-09-23 | 2010-09-24 | 1d | 0d |  |  | Juli; Sharon | 16h |
| 128 | 2 | End caNanoLab 1.5.2 | milestone | 0d | 2010-09-24 | 2010-09-24 | 100 | 2010-09-24 | 2010-09-24 | 0d | 0d |  | start no earlier than 2010-08-02 |  |  |
